# Legyen_on_is_milliomos

Schedule from MS Project, 2019-02-18 to 2019-05-05, status date 2019-05-03, costs in Ft.

## Calendars

- Szabványos: Mon-Fri 08:00-12:00, 13:00-17:00; Sat-Sun off.

## Resources

| Resource | Rate | Cost per use |
| --- | --- | --- |
| Bajnok Tamás | 4687.5 |  |
| Nagy Ádám | 4687.5 |  |
| Szabó Attila | 4062.5 |  |
| Tóth Tamás | 4062.5 |  |
| Varsa László | 4687.5 |  |
| Apple Fejlesztői díj |  | 27000 |
| Számítógépek |  | 650000 |
| Hálózati eszközök |  | 60000 |

## Schedule

| ID | WBS | Task | Type | Duration | Start | Finish | Predecessors | Baseline start | Baseline finish | Baseline duration | Total slack | Free slack | Constraint | Deadline | Resources | Work | Cost | Baseline cost |
| --- | --- | --- | --- | --- | --- | --- | --- | --- | --- | --- | --- | --- | --- | --- | --- | --- | --- | --- |
| 1 | 1 | **Tervezés** |  | 16d | 2019-02-18 | 2019-03-11 |  |  |  |  | 12d |  |  |  |  | 168h | 757,500 |  |
| 2 | 1.1 | Csapat szervezés |  | 8d | 2019-02-18 | 2019-02-27 |  | 2019-02-18 | 2019-02-27 | 8d | 13d | 2d |  |  | Nagy Ádám [50%]; Bajnok Tamás [50%] | 64h | 300,000 | 300,000 |
| 3 | 1.2 | Feladat kiosztás |  | 1d | 2019-02-18 | 2019-02-18 |  | 2019-02-18 | 2019-02-18 | 1d | 20d | 9d |  |  | Nagy Ádám [50%]; Bajnok Tamás [50%] | 8h | 37,500 | 37,500 |
| 4 | 1.3 | Feladatok kiosztása – Elkészül | milestone | 0d | 2019-03-03 | 2019-03-03 | 2, 3 | 2019-03-03 | 2019-03-03 |  | 11d | 0d | finish no earlier than 2019-03-03 |  |  |  |  |  |
| 5 | 1.4 | Adatbázis modell elkészítése |  | 2d | 2019-03-04 | 2019-03-05 | 4 | 2019-03-04 | 2019-03-05 | 2d | 35d | 0d |  |  | Bajnok Tamás | 16h | 75,000 | 75,000 |
| 6 | 1.5 | Reláció sémák létrehozása |  | 2d | 2019-03-04 | 2019-03-05 | 5SS | 2019-03-04 | 2019-03-05 | 2d | 35d | 0d |  |  | Tóth Tamás | 16h | 65,000 | 65,000 |
| 7 | 1.6 | Adatbázis tervezés |  | 4d | 2019-03-06 | 2019-03-11 | 6 | 2019-03-06 | 2019-03-11 | 4d | 35d | 0d |  |  | Bajnok Tamás; Tóth Tamás | 64h | 280,000 | 280,000 |
| 8 | 1.7 | Adatbázis megtervezése – Elkészül | milestone | 0d | 2019-03-11 | 2019-03-11 | 7 | 2019-03-11 | 2019-03-11 |  | 35d | 0d | finish no earlier than 2019-03-10 |  |  |  |  |  |
| 9 | 2 | **Alkalmazás fejlesztése** |  | 35d | 2019-03-04 | 2019-04-21 |  |  |  |  | 10d |  |  |  |  | 400h | 1,825,000 |  |
| 10 | 2.1 | **Backend** |  | 15d | 2019-03-04 | 2019-03-24 |  |  |  |  | 10d |  |  |  |  | 160h | 725,000 |  |
| 11 | 2.1.1 | PHP szerver telepítése, üzemben tartása |  | 5d | 2019-03-12 | 2019-03-18 | 8 | 2019-03-12 | 2019-03-18 | 5d | 35d | 0d |  |  | Bajnok Tamás | 40h | 187,500 | 187,500 |
| 12 | 2.1.2 | Szerver felállítása – Elkészül | milestone | 0d | 2019-03-18 | 2019-03-18 | 11 | 2019-03-18 | 2019-03-18 |  | 35d |  | finish no earlier than 2019-03-17 |  |  |  |  |  |
| 13 | 2.1.3 | Felhasználói felület tervezése |  | 10d | 2019-03-04 | 2019-03-15 | 4 | 2019-03-04 | 2019-03-15 | 10d | 11d | 0d |  |  | Varsa László | 80h | 375,000 | 375,000 |
| 14 | 2.1.4 | Felhasználói felület megtervezése – Elkészül | milestone | 0d | 2019-03-17 | 2019-03-17 | 13 | 2019-03-17 | 2019-03-17 |  | 11d | 0d | finish no earlier than 2019-03-17 |  |  |  |  |  |
| 15 | 2.1.5 | Backend kialakítása PHP-val |  | 5d | 2019-03-18 | 2019-03-22 | 14 | 2019-03-18 | 2019-03-22 | 5d | 11d | 0d |  |  | Tóth Tamás | 40h | 162,500 | 162,500 |
| 16 | 2.1.6 | Backend létrehozása – Elkészül | milestone | 0d | 2019-03-24 | 2019-03-24 | 15 | 2019-03-24 | 2019-03-24 |  | 31d |  | finish no earlier than 2019-03-24 |  |  |  |  |  |
| 17 | 2.2 | **Frontend** |  | 25d | 2019-03-18 | 2019-04-21 |  |  |  |  | 10d |  |  |  |  | 240h | 1,100,000 |  |
| 18 | 2.2.1 | Frontend kialakítása HTML, CSS és JavaScript felhasználásával |  | 5d | 2019-03-18 | 2019-03-22 | 15SS | 2019-03-18 | 2019-03-22 | 5d | 11d | 0d |  |  | Nagy Ádám; Szabó Attila | 80h | 350,000 | 350,000 |
| 19 | 2.2.2 | Frontend létrehozása –Elkészül | milestone | 0d | 2019-03-24 | 2019-03-24 | 18 | 2019-03-24 | 2019-03-24 |  | 11d | 0d | finish no earlier than 2019-03-24 |  |  |  |  |  |
| 20 | 2.2.3 | Alkalmazás alfa verzió megjelenése – Megtörténik | milestone | 0d | 2019-03-24 | 2019-03-24 | 18, 14 | 2019-03-24 | 2019-03-24 |  | 11d | 0d | finish no earlier than 2019-03-24 |  |  |  |  |  |
| 21 | 2.2.4 | Grafikus felület kialakítása |  | 20d | 2019-03-25 | 2019-04-19 | 19, 20 | 2019-03-25 | 2019-04-19 | 20d | 11d | 0d |  |  | Varsa László | 160h | 750,000 | 750,000 |
| 22 | 2.2.5 | GUI kialakítása – 2019.04.21 | milestone | 0d | 2019-04-21 | 2019-04-21 | 21 | 2019-04-21 | 2019-04-21 |  | 11d |  | finish no earlier than 2019-04-21 |  |  |  |  |  |
| 23 | 3 | **Véglegesítés** |  | 30d | 2019-03-25 | 2019-05-05 |  |  |  |  | 0d |  |  |  |  | 248h | 1,097,500 |  |
| 24 | 3.1 | Adatbázis feltöltése |  | 5d | 2019-03-25 | 2019-03-29 | 4, 18 | 2019-03-25 | 2019-03-29 | 5d | 16d | 10d |  |  | Szabó Attila; Nagy Ádám | 80h | 350,000 | 350,000 |
| 25 | 3.2 | Alkalmazás béta verzió megjelenése – 2019.04.14 | milestone | 0d | 2019-04-14 | 2019-04-14 | 24 | 2019-04-14 | 2019-04-14 |  | 6d | 0d | finish no earlier than 2019-04-14 |  |  |  |  |  |
| 26 | 3.3 | Tesztelés hibák javítása |  | 10d | 2019-04-15 | 2019-04-26 | 25 | 2019-04-15 | 2019-04-26 | 10d | 6d | 0d |  |  | Bajnok Tamás [50%]; Nagy Ádám [50%]; Tóth Tamás [50%] | 120h | 537,500 | 537,500 |
| 27 | 3.4 | Végleges alkalmazás megjelenése – 2019.04.28 | milestone | 0d | 2019-04-28 | 2019-04-28 | 26 | 2019-04-28 | 2019-04-28 |  | 6d |  | finish no earlier than 2019-04-28 |  |  |  |  |  |
| 28 | 3.5 | Részletes dokumentáció |  | 3d | 2019-05-01 | 2019-05-03 |  | 2019-05-01 | 2019-05-06 | 4d | 0d |  | start no earlier than 2019-05-01 |  | Nagy Ádám; Szabó Attila | 48h | 210,000 | 280,000 |
| 29 | 3.6 | Dokumentáció átadása - Megtörténik | milestone | 0d | 2019-05-05 | 2019-05-05 | 28 | 2019-05-06 | 2019-05-06 |  | 0d |  | finish no earlier than 2019-05-05 | 2019-05-05 |  |  |  |  |
